Schedule from MS Project, 2023-08-07 to 2024-10-25, costs in р..
Microsoft

## Calendars

- Стандартный: Mon-Fri 09:00-13:00, 14:00-18:00; Sat-Sun off.

## Resources

| Resource | Unit | Rate |
| --- | --- | --- |
| Специалист по проектированию ремонта депо |  | 1000 |
| Специалист по проектированию ремонта трамвайных путей |  | 1000 |
| Служба движения |  |  |
| Материалы для ремонта путей |  |  |
| Набор инструментов | шт. |  |
| Фандрайзер |  | 500 |
| Служба безопасности движения |  |  |
| Служба энергохозяйства |  |  |
| Материалы для ремонта депо |  |  |
| Материалы для ремонта остановок |  |  |
| Трамвайный вагон | шт. |  |
| Специалист по проектированию ремонта остановок |  | 1000 |
| Учебный пункт |  |  |
| Спецтехника | шт. |  |
| Ремонтно-техническая служба |  |  |
| Служба эксплуатации |  |  |
| Служба сбора и учета салонной выручки |  |  |
| Юридический отдел |  |  |
| Специальные вагоны, оборудованные техникой для ремонта трамвайного пути | шт. |  |
| Путерихтовочная машина | шт. |  |
| Рельсотранспортер | шт. |  |
| Бригада текущего ремонта |  |  |
| Бригада капитального ремонта |  |  |
| Планово-экономический отдел |  |  |
| Отдел по управлению персоналом |  |  |
| Директор "ИркутскГорТранс" |  |  |
| Административно-хозяйственный отдел |  |  |
| Бригада подрядчиков для ремонта |  | 2400 |
| Оборудование в депо |  |  |
| Специалист по проектированию замены трамвайных вагонов |  | 1000 |

## Schedule

| ID | WBS | Task | Duration | Start | Finish | Predecessors | Total slack | Free slack | Resources | Work | Cost |
| --- | --- | --- | --- | --- | --- | --- | --- | --- | --- | --- | --- |
| 1 | 1 | **Модернизация трамвайной системы** | 320d | 2023-08-07 | 2024-10-25 |  | 0d |  |  | 14709.3h | 4,326,760,000 |
| 2 | 1.1 | **Разработка проекта по модернизации** | 55d | 2023-08-07 | 2023-10-20 |  | 0d |  |  | 2776h | 1,280,000 |
| 3 | 1.1.1 | Составление проекта по ремонту депо | 30d | 2023-08-07 | 2023-09-15 |  | 0d |  | Специалист по проектированию ремонта депо | 240h | 240,000 |
| 4 | 1.1.2 | Составление проекта по ремонту трамвайных остановок | 30d | 2023-08-07 | 2023-09-15 |  | 0d |  | Специалист по проектированию ремонта остановок | 240h | 240,000 |
| 5 | 1.1.3 | Составление проекта по покупке трамвайных вагонов | 30d | 2023-08-07 | 2023-09-15 |  | 0d |  | Служба эксплуатации; Директор "ИркутскГорТранс" [45%]; Служба энергохозяйства [50%]; Специалист по проектированию замены трамвайных вагонов | 708h | 240,000 |
| 6 | 1.1.4 | Составление проекта по замене трамвайных путей | 30d | 2023-08-07 | 2023-09-15 |  | 0d |  | Бригада капитального ремонта; Директор "ИркутскГорТранс" [45%]; Ремонтно-техническая служба; Служба энергохозяйства [50%]; Специалист по проектированию ремонта трамвайных путей | 948h | 240,000 |
| 7 | 1.1.5 | Согласование проектов | 10d | 2023-09-18 | 2023-09-29 | 3, 4, 6, 5 | 0d |  | Директор "ИркутскГорТранс" [10%]; Планово-экономический отдел; Служба эксплуатации; Специалист по проектированию ремонта депо; Специалист по проектированию ремонта остановок; Специалист по проектированию ремонта трамвайных путей; Юридический отдел; Специалист по проектированию замены трамвайных вагонов | 568h | 320,000 |
| 8 | 1.1.6 | Получение разрешений | 15d | 2023-10-02 | 2023-10-20 | 7 | 0d |  | Директор "ИркутскГорТранс" [60%] | 72h |  |
| 9 | 1.2 | **Получение финансирования** | 290d | 2023-08-07 | 2024-09-13 |  | 30d |  |  | 1032h | 388,000 |
| 10 | 1.2.1 | Поиск инвесторов | 50d | 2023-10-23 | 2023-12-29 | 8 | 0d |  | Фандрайзер [25%] | 100h | 50,000 |
| 11 | 1.2.2 | Подача заявки на финансирование от государства | 40d | 2023-10-23 | 2023-12-15 | 8 | 10d |  | Фандрайзер [50%]; Планово-экономический отдел [30%]; Юридический отдел [50%] | 352h | 48,000 |
| 12 | 1.2.3 | Сбор финансов краундфандингом | 290d | 2023-08-07 | 2024-09-13 |  | 30d |  | Фандрайзер [25%] | 580h | 290,000 |
| 13 | 1.3 | **Осуществление закупок материалов для ремонта депо, остановок,оборудование для депо и закупок на услуги лизинга, ремонта депо и остановок** | 125d | 2023-10-23 | 2024-04-12 |  | 0d |  |  | 1668h | 4,322,500,000 |
| 14 | 1.3.1 | Составление документации на основе проектов | 15d | 2023-10-23 | 2023-11-10 | 8 | 35d |  | Директор "ИркутскГорТранс" [70%]; Планово-экономический отдел [70%]; Юридический отдел [50%] | 228h |  |
| 15 | 1.3.2 | Размещение закупок товаров и услуг в "ЕИС Закупки" | 5d | 2024-01-01 | 2024-01-05 | 10, 11, 14 | 0d |  | Планово-экономический отдел; Юридический отдел | 80h |  |
| 16 | 1.3.3 | Определение победителей по закупкам | 30d | 2024-01-08 | 2024-02-16 | 15 | 0d |  | Планово-экономический отдел | 240h |  |
| 17 | 1.3.4 | Заключение договоров с победителями | 10d | 2024-02-19 | 2024-03-01 | 16 | 0d |  | Планово-экономический отдел; Юридический отдел; Материалы для ремонта остановок [0.1%]; Материалы для ремонта путей [0.1%]; Оборудование в депо [0.1%]; Материалы для ремонта депо [0.1%]; Трамвайный вагон [0 шт.] | 160h | 4,322,500,000 |
| 18 | 1.3.5 | Прием и контроль поставок | 30d | 2024-03-04 | 2024-04-12 | 17 | 0d |  | Директор "ИркутскГорТранс"; Планово-экономический отдел; Юридический отдел; Административно-хозяйственный отдел | 960h |  |
| 19 | 1.4 | **Реализация проекта** | 140d | 2024-04-15 | 2024-10-25 |  | 0d |  |  | 7124h | 2,592,000 |
| 20 | 1.4.1 | Выполнение работ по капитальному ремонту трамвайных путей | 140d | 2024-04-15 | 2024-10-25 | 13 | 0d |  | Бригада капитального ремонта; Бригада текущего ремонта; Директор "ИркутскГорТранс" [20%]; Набор инструментов [1 шт.]; Материалы для ремонта путей [0.1%]; Путерихтовочная машина [1 шт.]; Рельсотранспортер [1 шт.]; Служба безопасности движения; Служба эксплуатации [25%]; Служба энергохозяйства; Спецтехника [1 шт.]; Специальные вагоны, оборудованные техникой для ремонта трамвайного пути [1 шт.] | 4984h |  |
| 21 | 1.4.2 | Выполнение работ по плановому ремонту остановок | 45d | 2024-04-15 | 2024-06-14 | 13 | 95d |  | Бригада подрядчиков для ремонта; Материалы для ремонта остановок [0.1%] | 360h | 864,000 |
| 22 | 1.4.3 | Ввод в эксплуатацию новых трамваев | 50d | 2024-04-15 | 2024-06-21 | 13 | 85d | 30d | Директор "ИркутскГорТранс" [50%]; Служба сбора и учета салонной выручки [50%]; Служба эксплуатации [50%]; Трамвайный вагон [0 шт.]; Служба движения | 1000h |  |
| 23 | 1.4.4 | **Модернизация депо** | 60d | 2024-04-15 | 2024-07-05 |  | 55d |  |  | 780h | 1,728,000 |
| 24 | 1.4.4.1 | Ремонт цеха временного-восстановительного ремонта | 30d | 2024-04-15 | 2024-05-24 | 13 | 55d | 0d | Бригада подрядчиков для ремонта; Материалы для ремонта депо [0.1%] | 240h | 576,000 |
| 25 | 1.4.4.2 | Ремонт цеха профилактического осмотра | 30d | 2024-04-15 | 2024-05-24 | 13 | 55d | 0d | Бригада подрядчиков для ремонта; Материалы для ремонта депо [0.1%] | 240h | 576,000 |
| 26 | 1.4.4.3 | Ремонт цеха планового ремонта | 30d | 2024-04-15 | 2024-05-24 | 13 | 55d | 0d | Бригада подрядчиков для ремонта; Материалы для ремонта депо [0.1%] | 240h | 576,000 |
| 27 | 1.4.4.4 | Ввод в эксплуатацию оборудования | 30d | 2024-05-27 | 2024-07-05 | 24, 25, 26 | 55d | 0d | Служба эксплуатации [25%]; Оборудование в депо [0.1%] | 60h |  |

| ID | WBS | Task | Duration | Start | Finish | Predecessors | Total slack | Free slack | Resources | Work |
| --- | --- | --- | --- | --- | --- | --- | --- | --- | --- | --- |
| 28 | 1.5 | **Работа с персоналом** | 300d | 2023-08-07 | 2024-09-27 |  | 20d |  |  | 2109.33h |
| 29 | 1.5.1 | Проведение оценки проффесиональной пригодности сотрудников "МУП ИркутскГорТранс" | 95d | 2023-10-23 | 2024-09-27 | 8 | 20d | 0d | Директор "ИркутскГорТранс" [30%]; Отдел по управлению персоналом [33.3%] | 481.33h |
| 30 | 1.5.2 | Проведение мероприятий для устранения несоответсвия компетенциий сотрудников | 30d | 2024-08-19 | 2024-09-27 | 29FF | 20d |  | Отдел по управлению персоналом [50%] | 120h |
| 31 | 1.5.3 | Проведение мероприятий направленных на выявление и предупреждение некомпетентного поведения персонала работающего с пассажирами | 110d | 2023-08-07 | 2024-07-12 |  | 75d |  | Директор "ИркутскГорТранс" [10%]; Отдел по управлению персоналом [50%]; Служба сбора и учета салонной выручки [50%] | 968h |
| 32 | 1.5.4 | Оценка качества знаний персонала для работы с новым оборудованием,техникой и транспортом | 25d | 2024-05-27 | 2024-06-28 | 22SS, 27SS | 55d | 0d | Учебный пункт; Отдел по управлению персоналом [50%] | 300h |
| 33 | 1.5.5 | Обучение персонала | 30d | 2024-07-01 | 2024-08-09 | 32, 22FF, 27FF | 55d |  | Учебный пункт | 240h |
